# VRWalkin' Locomotion Paradigms Project

Schedule from MS Project, 2022-10-03 to 2023-04-28.

## Calendars

- Standard: Mon-Fri 08:00-12:00, 13:00-17:00; Sat-Sun off. Exceptions (off unless hours are given): 2022-10-15 08:00-12:00, 13:00-17:00, 2022-10-22 to 2022-10-23 08:00-12:00, 13:00-17:00, 2022-10-29 to 2022-10-30 08:00-12:00, 13:00-17:00, 2022-11-05 08:00-12:00, 13:00-17:00, 2022-11-13 08:00-12:00, 13:00-17:00, 2022-11-26 to 2022-11-27 08:00-12:00, 13:00-17:00, 2022-12-03 to 2022-12-04 08:00-12:00, 13:00-17:00, 2022-12-11 08:00-12:00, 13:00-17:00, 2023-03-18 08:00-12:00, 13:00-17:00.

## Resources

| Resource |
| --- |
| Management |
| Project Manager |
| Analyst |
| Developer |
| Testers |
| Trainers |
| Technical Communicators |
| Deployment Team |

## Schedule

| ID | WBS | Task | Type | Duration | Start | Finish | Total slack | Constraint |
| --- | --- | --- | --- | --- | --- | --- | --- | --- |
| 1 | 1 | **Project Milestones** |  | 162d | 2022-10-03 | 2023-04-27 |  |  |
| 2 | 1.1 | Review Point 1 | manual | 1d | 2022-10-21 | 2022-10-21 |  | finish no earlier than 2022-10-21 |
| 3 | 1.2 | Tutorial 2 | manual | 1d | 2022-11-25 | 2022-11-25 |  | start no earlier than 2022-11-25 |
| 4 | 1.3 | Review Point 2 | manual | 1d | 2022-12-02 | 2022-12-02 |  | start no earlier than 2022-12-02 |
| 5 | 1.4 | Tutorial 3 | manual | 1d | 2023-02-10 | 2023-02-10 |  | start no earlier than 2023-02-10 |
| 6 | 1.5 | Review Point 3 | manual | 1d | 2023-02-17 | 2023-02-17 |  | start no earlier than 2023-02-17 |
| 7 | 1.6 | Showcase Entry | manual | 1d | 2023-02-17 | 2023-02-17 |  | finish no earlier than 2023-02-17 |
| 8 | 1.7 | Personal Project Deadline | manual | 1d | 2023-03-17 | 2023-03-17 |  | start no earlier than 2023-03-17 |
| 9 | 1.8 | Tutorial 4 | manual | 1d | 2023-04-07 | 2023-04-07 |  | start no earlier than 2023-04-07 |
| 10 | 1.9 | Project Deadline | manual | 1d | 2023-04-21 | 2023-04-21 |  | start no earlier than 2023-04-21 |
| 11 | 1.10 | Showcase | manual | 1d | 2023-04-27 | 2023-04-27 |  | start no earlier than 2023-04-27 |
| 12 | 2 | **Other Commitments** |  | 152d? | 2022-10-17 | 2023-04-28 |  |  |
| 13 | 2.1 | Mobile Platform Applications Module Coursework |  | 116d | 2022-10-17 | 2023-03-10 | 36d | finish no earlier than 2023-03-10 |
| 14 | 2.2 | Graphics in Games Module Coursework |  | 75d | 2023-01-06 | 2023-04-19 | 7d | finish no earlier than 2023-04-19 |
| 15 | 2.3 | Serious Games Module Coursework |  | 124d | 2022-11-07 | 2023-04-18 | 8d | finish no earlier than 2023-04-18 |
| 16 | 2.4 | Virtual Reality Module Coursework | manual | 152d | 2022-10-17 | 2023-04-28 |  |  |
| 17 | 3 | **Phase 1 - Implementation** |  | 87d | 2022-10-10 | 2023-01-20 |  |  |
| 18 | 3.1 | **Sprint 1 - Automated Traffic System** |  | 31d | 2022-10-10 | 2022-11-11 |  |  |
| 19 | 3.1.1 | Moving Vehicles |  | 2d | 2022-10-10 | 2022-10-11 | 156d |  |
| 20 | 3.1.2 | Vehicle Pathing System |  | 3d | 2022-10-13 | 2022-10-15 | 152d | start no earlier than 2022-10-13 |
| 21 | 3.1.3 | Vehicles stop in front of each other |  | 2d | 2022-10-22 | 2022-10-23 | 145d | finish no earlier than 2022-10-23 |
| 22 | 3.1.4 | Vehicles stop when user is in front of it |  | 2d | 2022-10-26 | 2022-10-27 | 141d | start no earlier than 2022-10-26 |
| 23 | 3.1.5 | Vehicle 3D models |  | 5d | 2022-11-05 | 2022-11-10 | 128d | start no earlier than 2022-11-05 |
| 24 | 3.1.6 | Testing Features |  | 2d | 2022-11-05 | 2022-11-07 | 131d | start no earlier than 2022-11-05 |

| ID | WBS | Task | Type | Duration | Start | Finish | Predecessors | Total slack | Free slack | Constraint |
| --- | --- | --- | --- | --- | --- | --- | --- | --- | --- | --- |
| 25 | 3.2 | **Sprint 2 - Application Levels** |  | 15d | 2022-11-14 | 2022-11-30 |  |  |  |  |
| 26 | 3.2.1 | Plain Crossing Level |  | 2d | 2022-11-14 | 2022-11-15 |  | 124d |  | start no earlier than 2022-11-14 |
| 27 | 3.2.2 | Level Starting Point |  | 1d | 2022-11-17 | 2022-11-17 |  | 122d |  | start no earlier than 2022-11-17 |
| 28 | 3.2.3 | Level Completion Point |  | 1d | 2022-11-21 | 2022-11-21 |  | 120d |  | start no earlier than 2022-11-21 |
| 29 | 3.2.4 | Road and House 3D Models |  | 6d | 2022-11-14 | 2022-11-21 |  | 116d | 0d |  |
| 30 | 3.2.5 | Surrounding Area Decorations |  | 4d | 2022-11-22 | 2022-11-25 | 29 | 116d |  |  |
| 31 | 3.2.6 | Testing Features |  | 2d | 2022-11-28 | 2022-11-29 |  | 112d |  | start no earlier than 2022-11-28 |
| 32 | 3.3 | **Sprint 3 - Locomotion Paradigms** |  | 27d | 2022-12-05 | 2023-01-09 |  |  |  |  |
| 33 | 3.3.1 | Thumb-stick |  | 2d | 2022-12-05 | 2022-12-06 |  | 80d | 0d |  |
| 34 | 3.3.2 | Jogging in Place |  | 5d | 2022-12-07 | 2022-12-12 | 33 | 80d | 0d |  |
| 35 | 3.3.3 | Walk-to-Point |  | 8d | 2022-12-13 | 2022-12-22 | 34 | 80d | 0d |  |
| 36 | 3.3.4 | Teleport |  | 3d | 2022-12-23 | 2022-12-27 | 34, 35 | 80d | 0d |  |
| 37 | 3.3.5 | Arm Swinging |  | 7d | 2022-12-28 | 2023-01-05 | 36 | 80d | 0d |  |
| 38 | 3.3.6 | Testing Features |  | 2d | 2023-01-06 | 2023-01-09 | 37 | 80d |  |  |
| 39 | 3.4 | **Sprint 4 - Menu Functionality** |  | 9d | 2023-01-09 | 2023-01-19 |  |  |  |  |
| 40 | 3.4.1 | Start-up Menu |  | 3d | 2023-01-09 | 2023-01-11 |  | 72d | 0d |  |
| 41 | 3.4.2 | Level Selection |  | 2d | 2023-01-12 | 2023-01-13 | 40 | 72d | 0d |  |
| 42 | 3.4.3 | Application Instructions |  | 2d | 2023-01-16 | 2023-01-17 | 41 | 72d | 0d |  |
| 43 | 3.4.4 | Testing Features |  | 2d | 2023-01-18 | 2023-01-19 | 42 | 72d |  |  |
| 44 | 4 | Phase 1 - Feedback | manual | 1d | 2023-01-23 | 2023-01-23 |  |  |  |  |
| 45 | 5 | **Phase 2 - Implementation** |  | 22d | 2023-01-24 | 2023-02-22 |  |  |  |  |
| 46 | 5.1 | **Sprint 5 - Material and Mesh Improvements** |  | 6d | 2023-01-24 | 2023-01-31 |  |  |  |  |
| 47 | 5.1.1 | Custom controller mesh and materials |  | 1d | 2023-01-24 | 2023-01-24 |  | 65d | 0d | start no earlier than 2023-01-24 |
| 48 | 5.1.2 | Improve point selection tool |  | 2d | 2023-01-25 | 2023-01-26 | 47 | 65d | 0d |  |
| 49 | 5.1.3 | Testing Features |  | 2d | 2023-01-27 | 2023-01-30 | 48 | 65d |  |  |

| ID | WBS | Task | Type | Duration | Start | Finish | Predecessors | Total slack | Free slack | Constraint |
| --- | --- | --- | --- | --- | --- | --- | --- | --- | --- | --- |
| 50 | 5.2 | **Sprint 6 - Visual Improvements** |  | 5d | 2023-01-30 | 2023-02-03 |  |  |  |  |
| 51 | 5.2.1 | Improve endpoint target |  | 1d | 2023-01-30 | 2023-01-30 |  | 61d | 0d | start no earlier than 2023-01-30 |
| 52 | 5.2.2 | Minor bug fixes |  | 2d | 2023-01-31 | 2023-02-01 | 51 | 61d | 0d |  |
| 53 | 5.2.3 | Testing Features |  | 2d | 2023-02-02 | 2023-02-03 | 52 | 61d |  |  |
| 54 | 5.3 | **Sprint 7 - Multiplayer Functionality** |  | 13d | 2023-02-06 | 2023-02-22 |  |  |  |  |
| 55 | 5.3.1 | Establish server and client communication |  | 2d | 2023-02-06 | 2023-02-07 |  | 49d | 0d | start no earlier than 2023-02-06 |
| 56 | 5.3.2 | Modify paradigms to be fit for replication |  | 8d | 2023-02-08 | 2023-02-17 | 55 | 49d | 0d |  |
| 57 | 5.3.3 | Testing Features |  | 2d | 2023-02-20 | 2023-02-21 | 56 | 49d |  |  |
| 58 | 6 | Phase 2 - Feedback | manual | 5d | 2023-02-23 | 2023-03-01 |  |  |  |  |
| 59 | 7 | **Phase 3 - Implementation** |  | 16d | 2023-03-02 | 2023-03-22 |  |  |  |  |
| 60 | 7.1 | **Sprint 8 - Collision Mechanics** |  | 10d | 2023-03-02 | 2023-03-15 |  |  |  |  |
| 61 | 7.1.1 | Collision Capsule Functions |  | 5d | 2023-03-02 | 2023-03-08 |  | 33d | 0d |  |
| 62 | 7.1.2 | Update all paradigms |  | 3d | 2023-03-09 | 2023-03-13 | 61 | 33d | 0d |  |
| 63 | 7.1.3 | Testing Features |  | 2d | 2023-03-14 | 2023-03-15 | 62 | 33d |  |  |
| 64 | 7.2 | **Sprint 9 - Additional Modular Variable** |  | 5d | 2023-03-16 | 2023-03-21 |  |  |  |  |
| 65 | 7.2.1 | Add selection distance |  | 2d | 2023-03-16 | 2023-03-17 |  | 28d | 0d |  |
| 66 | 7.2.2 | Update relevant menus |  | 1d | 2023-03-18 | 2023-03-18 | 65 | 28d | 0d |  |
| 67 | 7.2.3 | Testing Features |  | 2d | 2023-03-20 | 2023-03-21 | 66 | 28d |  |  |
| 68 | 8 | Preliminary Testing | manual | 3d | 2023-03-23 | 2023-03-27 |  |  |  |  |
| 69 | 9 | **Documentation** |  | 73d | 2023-01-09 | 2023-04-18 |  |  |  |  |
| 70 | 9.1 | Review and update report |  | 40d | 2023-01-09 | 2023-03-03 |  | 41d |  | start no earlier than 2023-01-09 |
| 71 | 9.2 | Review and update gantt chart |  | 30d | 2023-03-09 | 2023-04-18 |  | 8d |  | finish no earlier than 2023-04-18 |
